# CardioGuardian

Schedule from MS Project, 2021-05-05 to 2023-05-22.
Plan projekta razvoja novog hardversko-softversko
ETF

## Calendars

- Standard: Mon-Fri 08:00-12:00, 13:00-17:00; Sat-Sun off. Exceptions (off unless hours are given): 2022-01-01 (Nova godina 2022), 2022-01-07 (Božić 2022), 2022-02-15 to 2022-02-16 (Sretenje - Dan državnosti 2022), 2022-04-17 (Katolički Uskrs 2022), 2022-04-24 (Uskrs 2022), 2022-05-01 (Praznik rada 2022), 2022-08-01 (Swiss National Holiday 2022), 2022-11-11 (Dan primirja u I svetskom ratu 2022), 2022-12-25 (Katolički Božić 2022), 2023-01-01 (Nova godina 2023), 2023-01-07 (Božić 2023), 2023-02-15 to 2023-02-16 (Sretenje - Dan državnosti 2023), 2023-04-16 (Uskrs 2023), 2023-04-17 (Katolički Uskrs 2023), 2023-05-01 (Praznik rada 2023).

## Schedule

| ID | WBS | Task | Duration | Start | Finish | Predecessors | Total slack | Constraint |
| --- | --- | --- | --- | --- | --- | --- | --- | --- |
| 1 | 1 | **WP1 - Upravljanje projektom** | 524d? | 2021-05-05 | 2023-05-22 |  | 0d |  |
| 2 | 1.1 | **Organizacija početnog sastanka** | 5d | 2021-05-05 | 2021-05-12 |  | 0d |  |
| 3 | 1.1.1 | Dogovor u vezi datuma sastanka sa svim predstavnicima participanata | 1d | 2021-05-05 | 2021-05-06 |  | 0d |  |
| 4 | 1.1.2 | Ugovaranje smeštaja i prevoza za participante | 1d | 2021-05-06 | 2021-05-07 | 3 | 0d | start no earlier than 2021-05-06 |
| 5 | 1.1.3 | Zakup prostora i početak pripreme plana sastanka | 1d | 2021-05-07 | 2021-05-10 | 4 | 0d |  |
| 6 | 1.1.4 | Razvoj plana sastanka | 1d | 2021-05-10 | 2021-05-11 | 5 | 0d |  |
| 7 | 1.1.5 | Završetak organizacije sastanka | 1d | 2021-05-11 | 2021-05-12 | 6 | 0d |  |
| 8 | 1.2 | **Kick-off sastanak** | 5d | 2021-05-12 | 2021-05-19 | 2 |  |  |
| 9 | 1.2.1 | Upoznavanje članova i pregled ciljeva projekta | 1d | 2021-05-12 | 2021-05-13 |  | 0d |  |
| 10 | 1.2.2 | Pregled budzeta | 2d | 2021-05-13 | 2021-05-17 | 9 | 0d |  |
| 11 | 1.2.3 | Podela posla i definisanje rokova | 2d | 2021-05-17 | 2021-05-19 | 10 | 0d |  |
| 12 | 1.3 | **Upravljanje timovima** | 5d | 2021-05-19 | 2021-05-26 | 8 | 0d |  |
| 13 | 1.3.1 | Formiranje timova | 3d | 2021-05-19 | 2021-05-24 |  | 2d |  |
| 14 | 1.3.2 | Međusobno upoznavanje | 3d | 2021-05-19 | 2021-05-24 |  | 2d |  |
| 15 | 1.3.3 | Predstavljanje rasporeda dnevnih, nedeljnih i mesečnih sastanaka | 3d | 2021-05-19 | 2021-05-24 |  | 2d |  |
| 16 | 1.3.4 | Pojedinačno predstavljanje | 3d | 2021-05-19 | 2021-05-24 |  | 0d |  |
| 17 | 1.3.5 | Objašnjavanje strukture projekta članovima | 2d | 2021-05-24 | 2021-05-26 | 16 | 0d |  |
| 18 | 1.3.6 | Uspostavljanje pravila tima | 2d | 2021-05-24 | 2021-05-26 | 16 | 0d |  |
| 19 | 1.3.7 | Uspostavljanje dnevne rutine | 2d | 2021-05-24 | 2021-05-26 | 16 | 0d |  |
| 20 | 1.3.8 | Uspostavljanje načina komunikacije | 2d | 2021-05-24 | 2021-05-26 | 16 | 0d |  |
| 21 | 1.4 | **Logistika** | 509d | 2021-05-26 | 2023-05-22 | 12 | 0d |  |
| 22 | 1.4.1 | Podela odgovornosti i pisanje RASCI matrice | 7d | 2021-05-26 | 2021-06-04 |  | 0d |  |
| 23 | 1.4.2 | Definisanje parametara za praćenje napretka projekta | 3d | 2021-06-04 | 2021-06-09 | 22 | 0d |  |
| 24 | 1.4.3 | Pisanje neophodnih dokumenata | 5d | 2021-06-09 | 2021-06-16 | 23 | 0d |  |
| 25 | 1.4.4 | Pisanje PBS i RBS | 15d | 2021-06-16 | 2021-07-07 | 24 | 0d |  |
| 26 | 1.4.5 | Definisanje merljivosti i definicije završenog | 6d | 2021-07-07 | 2021-07-15 | 25 | 0d |  |

| ID | WBS | Task | Type | Duration | Start | Finish | Predecessors | Total slack | Constraint |
| --- | --- | --- | --- | --- | --- | --- | --- | --- | --- |
| 27 | 1.4.6 | **Kvalitet** |  | 15d | 2021-07-15 | 2021-08-05 | 26 | 0d |  |
| 28 | 1.4.6.1 | Planiranje kvaliteta |  | 12d | 2021-07-15 | 2021-08-02 |  | 0d |  |
| 29 | 1.4.6.2 | Postavljanje standarda kvaliteta |  | 3d | 2021-08-02 | 2021-08-05 | 28 | 0d |  |
| 30 | 1.4.7 | **Menadžment rizika** |  | 12d | 2021-08-05 | 2021-08-23 | 27 | 0d |  |
| 31 | 1.4.7.1 | Detaljna analiza do sada pronaćenih rizika |  | 5d | 2021-08-05 | 2021-08-12 | 27 | 0d |  |
| 32 | 1.4.7.2 | Formiranje metoda za ublažavanje ili eliminisanje rizika |  | 5d | 2021-08-12 | 2021-08-19 | 31 | 0d |  |
| 33 | 1.4.7.3 | Upozoravanje članova tima sa predviđenim rizicima |  | 2d | 2021-08-19 | 2021-08-23 | 32 | 0d |  |
| 34 | 1.4.8 | **Kontrola i monitoring** |  | 446d | 2021-08-23 | 2023-05-22 | 33 | 0d |  |
| 35 | 1.4.8.1 | Praćenje napretka projekta |  | 446d | 2021-08-23 | 2023-05-22 |  | 0d |  |
| 36 | 1.4.8.2 | Održavanje redovnih sastanaka |  | 446d | 2021-08-23 | 2023-05-22 |  | 0d |  |
| 37 | 1.4.8.3 | Upravljanje kvalitetom |  | 446d | 2021-08-23 | 2023-05-22 |  | 0d |  |
| 38 | 1.4.8.4 | Rešavanje nepredviđenih situacija |  | 446d | 2021-08-23 | 2023-05-22 |  | 0d |  |
| 39 | 1.4.8.5 | Upravljanje javnim nabavkama |  | 446d | 2021-08-23 | 2023-05-22 |  | 0d |  |
| 40 | 1.4.8.6 | Praćenje rashoda |  | 446d | 2021-08-23 | 2023-05-22 |  | 0d |  |
| 41 | 1.4.8.7 | Kontrola rezultata radnih paketa |  | 446d | 2021-08-23 | 2023-05-22 |  | 0d |  |
| 42 | 1.4.8.8 | Održavanje liste problema |  | 446d | 2021-08-23 | 2023-05-22 |  | 0d |  |
| 43 | 1.4.8.9 | Praćenje rizika |  | 446d | 2021-08-23 | 2023-05-22 |  | 0d |  |
| 44 | 1.4.8.10 | Obrada feedbacka od radnika |  | 446d | 2021-08-23 | 2023-05-22 |  | 0d |  |
| 45 | 1.5 | **Održavanje sastanaka o napretku na projektu** |  | 513d | 2021-05-05 | 2023-05-05 |  |  |  |
| 46 | 1.5.1 | **Sastanak nakon prvih 6 meseci** |  | 1d | 2021-11-05 | 2021-11-08 |  |  |  |
| 47 | 1.5.1.1 | M1: Izveštaj o napretku na projektu 1.1 | milestone | 0d | 2021-11-08 | 2021-11-08 |  | 389d | start no earlier than 2021-11-08 |
| 48 | 1.5.2 | **Sastanak nakon drugih 6 meseci** |  | 1d | 2022-05-05 | 2022-05-06 |  |  |  |
| 49 | 1.5.2.1 | M2: Izveštaj o napretku na projektu 1.2 | milestone | 0d | 2022-05-06 | 2022-05-06 |  | 263d | start no earlier than 2022-05-06 |
| 50 | 1.5.3 | **Sastanak nakon trećih 6 meseci** |  | 1d | 2022-11-05 | 2022-11-07 |  |  |  |
| 51 | 1.5.3.1 | M3: Izveštaj o napretku na projektu 2.1 | milestone | 0d | 2022-11-07 | 2022-11-07 |  | 133d | start no earlier than 2022-11-07 |

| ID | WBS | Task | Type | Duration | Start | Finish | Predecessors | Total slack | Free slack | Constraint |
| --- | --- | --- | --- | --- | --- | --- | --- | --- | --- | --- |
| 52 | 1.5.4 | **Sastanak nakon poslednjih 6 meseci** |  | 1d | 2023-05-03 | 2023-05-04 |  |  |  |  |
| 53 | 1.5.4.1 | M4: Izveštaj o napretku na projektu 2.2 | milestone | 0d | 2023-05-04 | 2023-05-04 |  | 10d |  | start no earlier than 2023-05-04 |
| 54 | 1.5.5 | **Organizaija Brainstorming-a** |  | 5d | 2021-05-05 | 2021-05-12 |  | 512d | 0d |  |
| 55 | 1.5.5.1 | Dogovor u vezi datuma sastanka sa svim predstavnicima participanata |  | 1d | 2021-05-05 | 2021-05-06 |  | 512d | 0d |  |
| 56 | 1.5.5.2 | Ugovaranje smeštaja i prevoza za participante |  | 1d | 2021-05-06 | 2021-05-07 | 55 | 512d | 0d |  |
| 57 | 1.5.5.3 | Zakup prostora i početak pripreme plana sastanka |  | 1d | 2021-05-07 | 2021-05-10 | 56 | 512d | 0d |  |
| 58 | 1.5.5.4 | Razvoj plana sastanka |  | 1d | 2021-05-10 | 2021-05-11 | 57 | 512d | 0d |  |
| 59 | 1.5.5.5 | Završetak organizacije sastanka |  | 1d | 2021-05-11 | 2021-05-12 | 58 | 512d |  |  |
| 60 | 1.5.6 | Održavanje Brainstorming-a |  | 7d | 2021-05-12 | 2021-05-21 | 54 | 512d |  |  |
| 61 | 1.5.7 | **Organizacija završnog sastanka** |  | 5d | 2023-04-18 | 2023-04-25 |  |  |  |  |
| 62 | 1.5.7.1 | Dogovor u vezi datuma sastanka sa svim predstavnicima participanata |  | 1d | 2023-04-18 | 2023-04-19 |  | 18d | 0d |  |
| 63 | 1.5.7.2 | Ugovaranje smeštaja i prevoza za participante |  | 1d | 2023-04-19 | 2023-04-20 | 62 | 18d | 0d |  |
| 64 | 1.5.7.3 | Zakup prostora i početak pripreme plana sastanka |  | 1d | 2023-04-20 | 2023-04-21 | 63 | 18d | 0d |  |
| 65 | 1.5.7.4 | Razvoj plana sastanka |  | 1d | 2023-04-21 | 2023-04-24 | 64 | 18d | 0d |  |
| 66 | 1.5.7.5 | Završetak organizacije sastanka |  | 1d | 2023-04-24 | 2023-04-25 | 65 | 18d |  |  |
| 67 | 1.5.8 | **Održavanje završnog sastanka** |  | 5d | 2023-04-27 | 2023-05-05 | 61 |  |  |  |
| 68 | 1.5.8.1 | M5: Konačan izveštaj celokupnog projekta | milestone | 0d | 2023-05-05 | 2023-05-05 |  | 11d |  | start no earlier than 2023-05-05 |
| 69 | 2 | **WP2 - Analiza korisničkih zahteva** |  | 87d | 2021-05-05 | 2021-09-03 |  | 180d | 0d |  |
| 70 | 2.1 | **Ispitivanje i analiza dosadašnjih postignuća** |  | 24d | 2021-05-05 | 2021-06-08 |  | 180d | 0d |  |
| 71 | 2.1.1 | **Odlazak u Budimpeštu** |  | 7d | 2021-05-05 | 2021-05-14 |  | 180d | 0d |  |
| 72 | 2.1.1.1 | Sastanak sa autorima naučnih radova |  | 7d | 2021-05-05 | 2021-05-14 |  | 517d |  |  |
| 73 | 2.1.1.2 | Obilazak bolnice |  | 7d | 2021-05-05 | 2021-05-14 |  | 517d |  |  |
| 74 | 2.1.2 | **Odlazak u Bazel** |  | 7d | 2021-05-14 | 2021-05-25 | 71 | 180d | 0d |  |
| 75 | 2.1.2.1 | Sastanak sa autorima naučnih radova |  | 7d | 2021-05-14 | 2021-05-25 |  | 449d |  |  |
| 76 | 2.1.2.2 | Obilazak bolnice |  | 7d | 2021-05-14 | 2021-05-25 |  | 449d |  |  |
| 77 | 2.1.3 | Testiranje dosadašnjih postignuća |  | 10d | 2021-05-25 | 2021-06-08 | 71, 74 | 437d |  |  |

| ID | WBS | Task | Duration | Start | Finish | Predecessors | Total slack | Free slack |
| --- | --- | --- | --- | --- | --- | --- | --- | --- |
| 78 | 2.2 | **Sprovođenje anketa korisnika** | 15d | 2021-06-08 | 2021-06-29 | 70 | 180d | 0d |
| 79 | 2.2.1 | Odabir lokacija za sprovođenje ankete | 3d | 2021-06-08 | 2021-06-11 |  | 460d |  |
| 80 | 2.2.2 | Formiranje pitanja | 5d | 2021-06-08 | 2021-06-15 |  | 437d | 0d |
| 81 | 2.2.3 | Prikupljanje odgovora | 10d | 2021-06-15 | 2021-06-29 | 80 | 437d |  |
| 82 | 2.3 | **Analiza odgovora anketa** | 10d | 2021-06-29 | 2021-07-13 | 78 | 180d | 0d |
| 83 | 2.3.1 | Unošenje rezultata | 5d | 2021-06-29 | 2021-07-06 |  | 437d | 0d |
| 84 | 2.3.2 | Generisanje grafikona odgovora | 2d | 2021-07-06 | 2021-07-08 | 83 | 437d | 0d |
| 85 | 2.3.3 | Analiza grafikona | 3d | 2021-07-08 | 2021-07-13 | 84 | 437d |  |
| 86 | 2.4 | **Definisanje potrebnih funkcionalnosti softvera** | 17d | 2021-07-13 | 2021-08-05 | 82 | 180d | 0d |
| 87 | 2.4.1 | Definisanje glavnih korisničkih funkcionalnosti | 10d | 2021-07-13 | 2021-07-27 |  | 437d | 0d |
| 88 | 2.4.2 | Konsultacije sa lekarima | 10d | 2021-07-13 | 2021-07-27 |  | 444d | 7d |
| 89 | 2.4.3 | Definisanje dodatnih funkcionalnosti | 7d | 2021-07-27 | 2021-08-05 | 87 | 437d | 0d |
| 90 | 2.5 | **Definisanje potrebnih funkcionalnosti hardvera** | 17d | 2021-08-05 | 2021-08-30 | 86 | 180d | 0d |
| 91 | 2.5.1 | Definisanje glavnih korisničkih funkcionalnosti | 10d | 2021-08-05 | 2021-08-19 |  | 180d | 0d |
| 92 | 2.5.2 | Konsultacije sa lekarima | 10d | 2021-08-05 | 2021-08-19 |  | 187d |  |
| 93 | 2.5.3 | Definisanje dodatnih funkcionalnosti | 7d | 2021-08-19 | 2021-08-30 | 91 | 180d |  |
| 94 | 2.6 | **Izbor odgovarajućeg PMLC modela** | 4d | 2021-08-30 | 2021-09-03 | 90, 86 | 180d |  |
| 95 | 2.6.1 | Analiza potrebnog tima | 3d | 2021-08-30 | 2021-09-02 |  | 180d | 0d |
| 96 | 2.6.2 | Analiza dinamike postojećih timova | 3d | 2021-08-30 | 2021-09-02 |  | 180d | 0d |
| 97 | 2.6.3 | Odabir konkretnog modela | 1d | 2021-09-02 | 2021-09-03 | 95, 96 | 180d |  |
| 98 | 3 | **WP3 - Analiza i detalji dizajna sistema** | 64d | 2021-09-03 | 2021-12-02 | 69 | 180d | 0d |
| 99 | 3.1 | Identifikovanje komponenti sistema | 10d | 2021-09-03 | 2021-09-17 |  | 180d | 0d |
| 100 | 3.2 | **Dizajn celokupnog sistema** | 14d | 2021-09-17 | 2021-10-07 | 99 | 180d | 0d |
| 101 | 3.2.1 | Dizajn softverskih komponenti | 14d | 2021-09-17 | 2021-10-07 |  | 180d |  |
| 102 | 3.2.2 | Dizajn hardverskih komponenti | 14d | 2021-09-17 | 2021-10-07 |  | 180d |  |

| ID | WBS | Task | Type | Duration | Start | Finish | Predecessors | Total slack | Free slack |
| --- | --- | --- | --- | --- | --- | --- | --- | --- | --- |
| 103 | 3.3 | **Detaljan dizajn sistema** |  | 10d | 2021-10-07 | 2021-10-21 | 100 | 180d | 0d |
| 104 | 3.3.1 | Detaljan dizajn softverskih komponenti |  | 10d | 2021-10-07 | 2021-10-21 |  | 180d |  |
| 105 | 3.3.2 | Detaljan dizajn hardverskih komponenti |  | 10d | 2021-10-07 | 2021-10-21 |  | 180d |  |
| 106 | 3.4 | Izrada prototipa |  | 30d | 2021-10-21 | 2021-12-02 | 103 | 180d | 0d |
| 107 | 3.5 | M6: Prototip | milestone | 0d | 2021-12-02 | 2021-12-02 | 106 | 180d |  |
| 108 | 4 | **WP4 - Razvijanje hardverske komponente (uređaja)** |  | 191d | 2021-12-02 | 2022-09-01 | 98 | 182d |  |
| 109 | 4.1 | Odlazak u Dablin - tim bilding |  | 10d | 2021-12-02 | 2021-12-16 |  | 182d | 0d |
| 110 | 4.2 | Razvoj senzora |  | 30d | 2021-12-16 | 2022-01-28 | 109 | 182d | 0d |
| 111 | 4.3 | Razvoj pojedinačnih hardverskih jedinica |  | 90d | 2022-01-28 | 2022-06-07 | 110 | 182d | 0d |
| 112 | 4.4 | Integracija hardverskog uređaja |  | 30d | 2022-06-07 | 2022-07-19 | 111 | 182d | 0d |
| 113 | 4.5 | **Testiranje hardverske komponente** |  | 31d | 2022-07-19 | 2022-09-01 | 112 | 182d | 0d |
| 114 | 4.5.1 | Testiranje funkcionalnosti |  | 21d | 2022-07-19 | 2022-08-18 |  | 182d | 0d |
| 115 | 4.5.2 | Identifikovanje potencijalnih nedostataka |  | 7d | 2022-08-18 | 2022-08-29 | 114 | 185d |  |
| 116 | 4.5.3 | Ispitivanje verovatnoće kvara |  | 10d | 2022-08-18 | 2022-09-01 | 114 | 182d |  |
| 117 | 4.5.4 | Ispitivanje životnog veka uređaja |  | 5d | 2022-08-18 | 2022-08-25 | 114 | 187d |  |
| 118 | 4.6 | M7: Hardverski uređaj | milestone | 0d | 2022-09-01 | 2022-09-01 | 113 | 182d |  |
| 119 | 5 | **WP5 - Razvijanje softverske komponente** |  | 193d | 2021-12-02 | 2022-09-05 | 98 | 180d | 0d |
| 120 | 5.1 | Odlazak u Cirih - tim bilding |  | 10d | 2021-12-02 | 2021-12-16 |  | 180d | 0d |
| 121 | 5.2 | Osposobljavanje servera |  | 18d | 2021-12-16 | 2022-01-12 | 120 | 180d | 0d |
| 122 | 5.3 | Realizacija baze podataka |  | 21d | 2022-01-12 | 2022-02-10 | 121 | 180d | 0d |
| 123 | 5.4 | **Obučavanje neuralne mreže** |  | 76d | 2022-02-10 | 2022-05-31 | 122 | 180d | 0d |
| 124 | 5.4.1 | Priprema podataka, čišćenje i otklanjanje grešaka |  | 12d | 2022-02-10 | 2022-03-02 |  | 180d | 0d |
| 125 | 5.4.2 | Vizuelizacija podataka i analiza |  | 14d | 2022-03-02 | 2022-03-22 | 124 | 180d | 0d |
| 126 | 5.4.3 | Treniranje modela - podešavanje hiperparametara |  | 40d | 2022-03-22 | 2022-05-17 | 125 | 180d | 0d |
| 127 | 5.4.4 | Testiranje modela |  | 10d | 2022-05-17 | 2022-05-31 | 126 | 180d |  |
| 128 | 5.5 | Realizacija aplikacije |  | 40d | 2022-05-31 | 2022-07-26 | 123 | 180d | 0d |
| 129 | 5.6 | Integracija softverskog uređaja |  | 24d | 2022-05-31 | 2022-07-04 | 123 | 196d | 16d |

| ID | WBS | Task | Type | Duration | Start | Finish | Predecessors | Total slack | Free slack |
| --- | --- | --- | --- | --- | --- | --- | --- | --- | --- |
| 130 | 5.7 | **Testiranje softverske komponente** |  | 28d | 2022-07-26 | 2022-09-05 | 129, 128 | 180d | 0d |
| 131 | 5.7.1 | Testiranje funkcionalnosti |  | 21d | 2022-07-26 | 2022-08-25 |  | 180d | 0d |
| 132 | 5.7.2 | Pronalaženje nedostataka i njihovo otklanjanje |  | 7d | 2022-08-25 | 2022-09-05 | 131 | 180d |  |
| 133 | 5.8 | M8: Aplikacija | milestone | 0d | 2022-09-05 | 2022-09-05 | 128, 130 | 180d |  |
| 134 | 6 | **WP6 - Integracija sistema** |  | 0d | 2022-09-05 | 2022-09-05 | 119 | 180d | 0d |
| 135 | 6.1 | M9: Izveštaj uspešnosti integracije | milestone | 0d | 2022-09-05 | 2022-09-05 |  | 180d |  |
| 136 | 6.2 | M10: Integrisan sistem - funkcionalna celina | milestone | 0d | 2022-09-05 | 2022-09-05 |  | 180d |  |
| 137 | 7 | **WP7 - Testiranje sistema** |  | 0d | 2022-09-05 | 2022-09-05 | 134 | 180d |  |
| 138 | 7.1 | M11: Izveštaj testiranja | milestone | 0d | 2022-09-05 | 2022-09-05 |  | 180d |  |
